Schedule from MS Project, 2016-04-01 to 2016-06-10, costs in R$, A marks actual dates.

## Calendars

- Padrão: Mon-Fri 09:00-12:00, 13:00-18:00; Sat-Sun off.

## Resources

| Resource | Rate | Cost per use |
| --- | --- | --- |
| Tales Abdo dos Santos | 9 |  |
| Notebook |  | 2000 |

## Schedule

| ID | WBS | Task | Duration | Start | Finish | Predecessors | Complete | Remaining | Total slack | Free slack | Constraint | Resources | Work | Actual work | Cost | Actual cost |
| --- | --- | --- | --- | --- | --- | --- | --- | --- | --- | --- | --- | --- | --- | --- | --- | --- |
| 1 | 1 | **Projeto ES2** | 51d | 2016-04-01 A | 2016-06-10 |  | 58% | 21.65d |  |  |  |  | 357.6h | 214.2h | 3,218.4 | 1,927.8 |
| 2 | 1.1 | **Engenharia de Requisitos** | 9d | 2016-04-01 A | 2016-04-13 A |  | 100% |  |  |  |  |  | 41.6h | 41.6h | 374.4 | 374.4 |
| 3 | 1.1.1 | Elicitação de requisitos | 2d | 2016-04-01 A | 2016-04-04 A |  | 100% |  |  |  |  | Tales Abdo dos Santos [95%] | 15.6h | 15.6h | 140.4 | 140.4 |
| 4 | 1.1.2 | Gestão de requisitos | 1d | 2016-04-05 A | 2016-04-05 A | 3 | 100% |  |  |  |  | Tales Abdo dos Santos [95%] | 7.6h | 7.6h | 68.4 | 68.4 |
| 5 | 1.1.3 | Matriz de rastreabilidade | 1d | 2016-04-06 A | 2016-04-06 A | 4 | 100% |  |  |  |  | Tales Abdo dos Santos [95%] | 7.6h | 7.6h | 68.4 | 68.4 |
| 6 | 1.1.4 | Validação dos requisitos | 3d | 2016-04-07 A | 2016-04-11 A | 5 | 100% |  |  |  |  |  |  |  |  |  |
| 7 | 1.1.5 | Documento de especificação | 2d | 2016-04-12 A | 2016-04-13 A | 6 | 100% |  |  |  |  | Tales Abdo dos Santos [45%] | 7.2h | 7.2h | 64.8 | 64.8 |
| 8 | 1.1.6 | Documento de especificação suplementar | 1d | 2016-04-12 A | 2016-04-12 A | 6 | 100% |  |  |  |  | Tales Abdo dos Santos [45%] | 3.6h | 3.6h | 32.4 | 32.4 |
| 9 | 1.2 | **Modelagem** | 5d | 2016-04-14 A | 2016-04-20 A |  | 100% |  |  |  |  |  | 36h | 36h | 324 | 324 |
| 10 | 1.2.1 | Elaboração de diagrama de Caso de Uso | 1d | 2016-04-14 A | 2016-04-14 A | 7 | 100% |  |  |  |  | Tales Abdo dos Santos [90%] | 7.2h | 7.2h | 64.8 | 64.8 |
| 11 | 1.2.2 | Elaboração de Casos de Uso textuais | 2d | 2016-04-15 A | 2016-04-18 A | 10 | 100% |  |  |  |  | Tales Abdo dos Santos [90%] | 14.4h | 14.4h | 129.6 | 129.6 |
| 12 | 1.2.3 | DFD | 2d | 2016-04-19 A | 2016-04-20 A | 11 | 100% |  |  |  |  | Tales Abdo dos Santos [90%] | 14.4h | 14.4h | 129.6 | 129.6 |
| 13 | 1.3 | **Planejamento** | 4d | 2016-04-21 A | 2016-04-26 |  | 79% | 0.86d | 33d |  |  |  | 22h | 18.4h | 198 | 165.6 |
| 14 | 1.3.1 | Contagem de FP | 1d | 2016-04-21 A | 2016-04-21 A | 12 | 100% |  |  |  |  | Tales Abdo dos Santos [45%] | 3.6h | 3.6h | 32.4 | 32.4 |
| 15 | 1.3.2 | Estimativas | 1d | 2016-04-21 A | 2016-04-21 A | 12 | 100% |  |  |  |  | Tales Abdo dos Santos [45%] | 3.6h | 3.6h | 32.4 | 32.4 |
| 16 | 1.3.3 | Elaboração de gráfico de Gantt | 1d | 2016-04-22 A | 2016-04-22 | 15 | 50% | 0.5d | 35d |  |  | Tales Abdo dos Santos [30%] | 2.4h | 1.2h | 21.6 | 10.8 |
| 17 | 1.3.4 | Elaboração de Gantt de controle | 1d | 2016-04-22 A | 2016-04-22 | 15 | 50% | 0.5d | 35d |  |  | Tales Abdo dos Santos [30%] | 2.4h | 1.2h | 21.6 | 10.8 |
| 18 | 1.3.5 | Elaboração de diagrama de rede | 1d | 2016-04-22 A | 2016-04-22 | 15 | 50% | 0.5d | 35d |  |  | Tales Abdo dos Santos [30%] | 2.4h | 1.2h | 21.6 | 10.8 |
| 19 | 1.3.6 | Gerenciamento de riscos | 1d | 2016-04-25 A | 2016-04-25 A | 18 | 100% |  |  |  | start no earlier than 2016-04-12 | Tales Abdo dos Santos [5%] | 0.4h | 0.4h | 3.6 | 3.6 |
| 20 | 1.3.7 | Documento de Planejamento e Acompanhamento | 1d | 2016-04-26 A | 2016-04-26 A | 19 | 100% |  |  |  |  | Tales Abdo dos Santos [90%] | 7.2h | 7.2h | 64.8 | 64.8 |
| 21 | 1.4 | **Construção** | 32d | 2016-04-27 A | 2016-06-09 |  | 47% | 17d | 0d |  |  |  | 230.4h | 108h | 2,073.6 | 972 |
| 22 | 1.4.1 | Prototipação | 2d | 2016-04-27 A | 2016-04-28 A | 20 | 100% |  |  |  |  | Tales Abdo dos Santos [90%] | 14.4h | 14.4h | 129.6 | 129.6 |
| 23 | 1.4.2 | Codificação | 22d | 2016-04-29 A | 2016-05-30 | 22 | 50% | 11d | 1.5d | 0d |  | Tales Abdo dos Santos [90%] | 158.4h | 79.2h | 1,425.6 | 712.8 |
| 24 | 1.4.3 | Testes | 6d | 2016-05-31 A | 2016-06-07 | 23 | 25% | 4.5d | 0.5d | 0d |  | Tales Abdo dos Santos [90%] | 43.2h | 10.8h | 388.8 | 97.2 |
| 25 | 1.4.4 | Elaboração Manual de Uso | 2d | 2016-06-08 A | 2016-06-09 | 24 | 25% | 1.5d | 0d |  |  | Tales Abdo dos Santos [90%] | 14.4h | 3.6h | 129.6 | 32.4 |

| ID | WBS | Task | Duration | Start | Finish | Predecessors | Complete | Remaining | Total slack | Constraint | Resources | Work | Actual work | Cost | Actual cost |
| --- | --- | --- | --- | --- | --- | --- | --- | --- | --- | --- | --- | --- | --- | --- | --- |
| 26 | 1.5 | **Emprego** | 1d | 2016-06-10 | 2016-06-10 |  |  |  | 0d |  |  | 7.2h |  | 64.8 |  |
| 27 | 1.5.1 | Homologação | 1d | 2016-06-10 | 2016-06-10 | 25 |  |  | 0d |  | Tales Abdo dos Santos [90%] | 7.2h |  | 64.8 |  |
| 28 | 1.6 | Controle de versionamento | 51d | 2016-04-01 A | 2016-06-10 | 3SS | 50% | 25.5d | 0d | start no earlier than 2016-04-01 | Tales Abdo dos Santos [5%] | 20.4h | 10.2h | 183.6 | 91.8 |
